# Relocation Devom Inc.

Schedule from MS Project XML, 2004-08-02 to 2004-11-16, status date 2004-09-17, 7.5 hours a day, costs in $, A marks actual dates.
Devom Inc.

## Calendars

- Standard: Mon-Fri 08:00-12:00, 13:00-16:30; Sat-Sun off. Exceptions (off unless hours are given): 2004-09-06, 2004-10-12, 2004-11-11.

## Resources

| Resource | Unit | Rate |
| --- | --- | --- |
| boxes | boxes | 2 |
| Falgon – John |  | 30 |
| Hilcrest – Nancy |  | 35 |
| Roach – Pierre |  | 75 |
| Salin – Nelson |  | 150 |
| the contractor |  | 30 |
| the employees |  | 25 |
| the LAN consultants |  | 75 |
| the movers |  | 25 |
| the realtor |  | 35 |
| you |  | 75 |

## Schedule

| ID | WBS | Task | Type | Duration | Start | Finish | Predecessors | Complete | Remaining | Baseline start | Baseline finish | Baseline duration | Total slack | Free slack | Constraint | Deadline | Resources | Work | Actual work | Cost | Baseline cost | Actual cost | Text27 | Text29 |
| --- | --- | --- | --- | --- | --- | --- | --- | --- | --- | --- | --- | --- | --- | --- | --- | --- | --- | --- | --- | --- | --- | --- | --- | --- |
| 1 | 1 | **REQUIREMENTS** |  | 7.33d? | 2004-08-02 A | 2004-08-11 A |  | 100% |  | 2004-08-02 | 2004-08-11 | 7.33d? |  |  |  |  |  | 30h | 30h | 1,650 | 1,650 | 1,650 | Eric Uyttewaal | EU |
| 2 | 1.1 | research staff requirements |  | 3.33d? | 2004-08-02 A | 2004-08-05 A |  | 100% |  | 2004-08-02 | 2004-08-05 | 4d? |  |  |  |  | you [60%] | 15h | 15h | 1,125 | 1,125 | 1,125 | Eric Uyttewaal | EU |
| 3 | 1.2 | summarize requirements |  | 4d? | 2004-08-05 A | 2004-08-11 A | 2 | 100% |  | 2004-08-05 | 2004-08-11 | 4d? |  |  |  |  | Hilcrest – Nancy [50%] | 15h | 15h | 525 | 525 | 525 | Eric Uyttewaal | EU |
| 4 | 2 | **LOCATION** |  | 16.5d | 2004-08-02 A | 2004-08-24 A |  | 100% |  | 2004-08-02 | 2004-08-24 | 16.5d |  |  |  |  |  | 105h | 105h | 6,075 | 6,075 | 6,075 | Eric Uyttewaal | EU |
| 5 | 2.1 | select the realtor |  | 3.33d | 2004-08-02 A | 2004-08-05 A |  | 100% |  | 2004-08-02 | 2004-08-05 | 4d |  |  |  |  | you [60%] | 15h | 15h | 1,125 | 1,125 | 1,125 | Eric Uyttewaal | EU |
| 6 | 2.2 | visit the sites |  | 1d | 2004-08-05 A | 2004-08-06 A | 5 | 100% |  | 2004-08-05 | 2004-08-06 | 1d |  |  |  |  | the realtor; you [125%]; Falgon – John; Hilcrest – Nancy | 30h | 30h | 1,312.5 | 1,312.5 | 1,312.5 | Eric Uyttewaal | EU |
| 7 | 2.3 | evaluate the sites |  | 1d | 2004-08-11 A | 2004-08-12 A | 6, 3 | 100% |  | 2004-08-11 | 2004-08-12 | 1d |  |  |  |  | Falgon – John; Hilcrest – Nancy; the realtor [50%]; you [125%] | 26.25h | 26.25h | 1,181.25 | 1,181.25 | 1,181.25 | Eric Uyttewaal | EU |
| 8 | 2.4 | meet to select the location |  | 1d | 2004-08-23 A | 2004-08-23 A | 7 | 100% |  | 2004-08-23 | 2004-08-23 | 1d |  |  | start no earlier than 2004-08-23 |  | Falgon – John; Hilcrest – Nancy; Salin – Nelson; you | 30h | 30h | 2,175 | 2,175 | 2,175 | Eric Uyttewaal | EU |
| 9 | 2.5 | legal review |  | 0.5d | 2004-08-24 A | 2004-08-24 A | 8 | 100% |  | 2004-08-24 | 2004-08-24 | 0.5d |  |  |  |  | Roach – Pierre | 3.75h | 3.75h | 281.25 | 281.25 | 281.25 | Eric Uyttewaal | EU |
| 10 | 2.6 | location selected | milestone | 0d | 2004-08-24 A | 2004-08-24 A | 9 | 100% |  | 2004-08-24 | 2004-08-24 |  |  |  |  | 2004-08-20 |  |  |  |  |  |  | Eric Uyttewaal | EU |
| 11 | 3 | **REMODELING CONTRACT** |  | 9.6d | 2004-08-24 A | 2004-09-08 A |  | 100% |  | 2004-08-24 | 2004-09-08 | 10d |  |  |  |  |  | 52.5h | 52.5h | 3,300 | 3,300 | 3,300 | Eric Uyttewaal | EU |
| 12 | 3.1 | select the contractor |  | 1.6d | 2004-08-24 A | 2004-08-26 A | 10 | 100% |  | 2004-08-24 | 2004-08-26 | 2d |  |  |  |  | you [125%] | 15h | 15h | 1,125 | 1,125 | 1,125 | Eric Uyttewaal | EU |
| 13 | 3.2 | meet to discuss contract |  | 1d | 2004-09-02 A | 2004-09-03 A | 12FS+5d | 100% |  | 2004-09-02 | 2004-09-03 | 1d |  |  |  |  | you; the contractor; Hilcrest – Nancy | 22.5h | 22.5h | 1,050 | 1,050 | 1,050 | Eric Uyttewaal | EU |
| 14 | 3.3 | revise the schedule |  | 1d | 2004-09-03 A | 2004-09-07 A | 13 | 100% |  | 2004-09-03 | 2004-09-07 | 1d |  |  |  |  | you | 7.5h | 7.5h | 562.5 | 562.5 | 562.5 | Eric Uyttewaal | EU |
| 15 | 3.4 | negotiate the contract |  | 1d | 2004-09-07 A | 2004-09-08 A | 14 | 100% |  | 2004-09-07 | 2004-09-08 | 1d |  |  |  |  | you | 7.5h | 7.5h | 562.5 | 562.5 | 562.5 | Eric Uyttewaal | EU |
| 16 | 3.5 | contractor contracted | milestone | 0d | 2004-09-08 A | 2004-09-08 A | 15 | 100% |  | 2004-09-08 | 2004-09-08 |  |  |  |  | 2004-08-30 |  |  |  |  |  |  | Eric Uyttewaal | EU |
| 17 | 4 | **REMODELED LOCATION** |  | 39.67d? | 2004-09-10 A | 2004-11-05 |  | 6% | 37.31d? | 2004-09-08 | 2004-11-05 | 41d? | -8.67d | 0d |  |  |  | 2422.5h | 225h | 103,425 | 86,175 |  | Eric Uyttewaal | EU |
| 18 | 4.1 | relocate walls |  | 9d | 2004-09-10 A | 2004-09-27 | 16 | 33% | 6d | 2004-09-08 | 2004-09-22 | 10d? | -6.67d | 0d |  |  | the contractor [1000%] | 975h | 225h | 35,250 | 22,500 |  | Eric Uyttewaal | EU |
| 19 | 4.2 | install electric wiring |  | 3d? | 2004-09-28 | 2004-09-30 | 18 |  |  | 2004-09-22 | 2004-09-29 | 5d? | -6.67d | 0d |  |  | the contractor [500%] | 187.5h |  | 7,125 | 5,625 |  | Eric Uyttewaal | EU |
| 20 | 4.3 | paint |  | 2d? | 2004-10-01 | 2004-10-04 | 19 |  |  | 2004-09-29 | 2004-10-01 | 2d? | -6.67d | 0d |  |  | the contractor [400%] | 60h |  | 1,800 | 1,800 |  | Eric Uyttewaal | EU |
| 21 | 4.4 | drying of paint |  | 4ed | 2004-10-04 | 2004-10-08 | 20 |  |  | 2004-10-01 | 2004-10-05 | 4ed | -32.8d | 0d |  |  |  |  |  |  |  |  | Eric Uyttewaal | EU |
| 22 | 4.5 | install cabinetry |  | 5d? | 2004-10-11 | 2004-10-18 | 21 |  |  | 2004-10-05 | 2004-10-13 | 5d? | -1.67d | 0d |  |  | the contractor [800%] | 300h |  | 9,000 | 9,000 |  | Eric Uyttewaal | EU |
| 23 | 4.6 | install LAN |  | 12d? | 2004-10-11 | 2004-10-27 | 21 |  |  | 2004-10-05 | 2004-10-22 | 12d? | -8.67d | 0d |  |  | the LAN consultants [500%] | 450h |  | 33,750 | 33,750 |  | Eric Uyttewaal | EU |
| 24 | 4.7 | lay carpet |  | 6.67d? | 2004-10-28 | 2004-11-05 | 23, 22 |  |  | 2004-10-22 | 2004-11-05 | 10d? | -8.67d | 0d |  |  | the contractor [600%] | 450h |  | 16,500 | 13,500 |  | Eric Uyttewaal | EU |
| 25 | 4.8 | facility remodeled | milestone | 0d | 2004-11-05 | 2004-11-05 | 24 |  |  | 2004-11-05 | 2004-11-05 |  | -8.67d | 0d |  | 2004-10-25 |  |  |  |  |  |  | Eric Uyttewaal | EU |

| ID | WBS | Task | Type | Duration | Start | Finish | Predecessors | Baseline start | Baseline finish | Baseline duration | Total slack | Constraint | Deadline | Resources | Work | Cost | Baseline cost | Text27 | Text29 |
| --- | --- | --- | --- | --- | --- | --- | --- | --- | --- | --- | --- | --- | --- | --- | --- | --- | --- | --- | --- |
| 26 | 5 | **MOVE** |  | 40d? | 2004-09-20 | 2004-11-16 |  | 2004-08-24 | 2004-11-16 | 57.5d | 0d |  |  |  | 1215h | 31,925 | 31,925 | Eric Uyttewaal | EU |
| 27 | 5.1 | select mover |  | 2d | 2004-09-20 | 2004-09-21 | 10 | 2004-08-24 | 2004-08-26 | 2d | 34d | start no earlier than 2004-09-17 |  | you | 15h | 1,125 | 1,125 | Eric Uyttewaal | EU |
| 28 | 5.2 | pack |  | 2d | 2004-11-10 | 2004-11-12 | 27, 25 | 2004-11-10 | 2004-11-12 | 2d | 0d | as late as possible |  | the employees [3500%]; boxes [400 boxes] | 525h | 13,925 | 13,925 | Eric Uyttewaal | EU |
| 29 | 5.3 | move |  | 2d? | 2004-11-13 | 2004-11-14 | 28 | 2004-11-13 | 2004-11-14 | 2d | 0d |  |  | the movers [1000%] | 150h | 3,750 | 3,750 | Eric Uyttewaal | EU |
| 30 | 5.4 | unpack |  | 2d | 2004-11-15 | 2004-11-16 | 29 | 2004-11-15 | 2004-11-16 | 2d | 0d |  |  | the employees [3500%] | 525h | 13,125 | 13,125 | Eric Uyttewaal | EU |
| 31 | 5.5 | new location opened | milestone | 0d | 2004-11-16 | 2004-11-16 | 30 | 2004-11-16 | 2004-11-16 |  | 0d |  | 2004-11-16 |  |  |  |  | Eric Uyttewaal | EU |
